# S公司项目集

Schedule from a web Gantt chart, 2024-06-03 to 2024-12-12.
Saturdays and Sundays are off

## Schedule

| ID | WBS | Task | Duration | Start | Finish | Predecessors | Status |
| --- | --- | --- | --- | --- | --- | --- | --- |
| 2 | 1 | **大模型知识库项目** | 139d | 2024-06-03 | 2024-12-12 |  |  |
| 3 | 1.1 | **项目启动** | 6d | 2024-06-03 | 2024-06-10 |  | waiting |
| 4 | 1.1.1 | 市场调研 | 6d | 2024-06-03 | 2024-06-10 |  | waiting |
| 5 | 1.1.2 | 技术调研 | 6d | 2024-06-03 | 2024-06-10 |  | waiting |
| 6 | 1.1.3 | 经济性预估 | 5d | 2024-06-03 | 2024-06-07 |  | waiting |
| 7 | 1.2 | **需求分析** | 13d | 2024-06-11 | 2024-06-27 |  |  |
| 8 | 1.2.1 | 需求收集 | 6d | 2024-06-11 | 2024-06-18 | 4, 5, 6, 3 | waiting |
| 9 | 1.2.2 | 需求调研 | 7d | 2024-06-19 | 2024-06-27 | 8 | waiting |
| 10 | 1.3 | **产品设计** | 21d | 2024-06-28 | 2024-07-26 |  |  |
| 11 | 1.3.1 | 需求冻结 | 4d | 2024-06-28 | 2024-07-03 | 9 | waiting |
| 12 | 1.3.2 | 整体设计执行 | 7d | 2024-07-04 | 2024-07-12 | 11 | waiting |
| 13 | 1.3.3 | **模块设计执行** | 10d | 2024-07-15 | 2024-07-26 |  |  |
| 14 | 1.3.3.1 | API产品设计 | 6d | 2024-07-15 | 2024-07-22 | 12 | waiting |
| 15 | 1.3.3.2 | 模型产品设计 | 10d | 2024-07-15 | 2024-07-26 | 12 | waiting |
| 16 | 1.3.3.3 | 数仓产品设计 | 6d | 2024-07-15 | 2024-07-22 | 12 | waiting |
| 17 | 1.3.3.4 | 平台产品设计 | 10d | 2024-07-15 | 2024-07-26 | 12 | waiting |
| 18 | 1.3.3.5 | 产品UI设计 | 6d | 2024-07-15 | 2024-07-22 | 12 | waiting |
| 19 | 1.4 | **技术设计** | 30d | 2024-07-29 | 2024-09-06 |  |  |
| 20 | 1.4.1 | 整体架构设计 | 10d | 2024-07-29 | 2024-08-09 | 14, 15, 16, 17, 18 | waiting |
| 21 | 1.4.2 | **模块技术设计** | 20d | 2024-08-12 | 2024-09-06 |  |  |
| 22 | 1.4.2.1 | API技术设计 | 13d | 2024-08-12 | 2024-08-28 | 20 | waiting |
| 23 | 1.4.2.2 | 识别模型技术设计 | 18d | 2024-08-12 | 2024-09-04 | 20 | waiting |
| 24 | 1.4.2.3 | 处置模型技术设计 | 20d | 2024-08-12 | 2024-09-06 | 20 | waiting |
| 25 | 1.4.2.4 | 数仓技术设计 | 6d | 2024-08-12 | 2024-08-19 | 20 | waiting |
| 26 | 1.4.2.5 | 平台技术设计 | 12d | 2024-08-12 | 2024-08-27 | 20 | waiting |

| ID | WBS | Task | Duration | Start | Finish | Predecessors | Status |
| --- | --- | --- | --- | --- | --- | --- | --- |
| 27 | 1.5 | **产品研发** | 57d | 2024-08-20 | 2024-11-06 |  |  |
| 28 | 1.5.1 | **模块研发** | 49d | 2024-08-20 | 2024-10-25 |  |  |
| 29 | 1.5.1.1 | **API模块研发** | 26d | 2024-08-29 | 2024-10-03 |  |  |
| 30 | 1.5.1.1.1 | 主接口研发 | 10d | 2024-08-29 | 2024-09-11 | 22 | waiting |
| 31 | 1.5.1.1.2 | PI层研发 | 8d | 2024-09-12 | 2024-09-23 | 30 | waiting |
| 32 | 1.5.1.1.3 | RE层研发 | 13d | 2024-09-12 | 2024-09-30 | 30 | waiting |
| 33 | 1.5.1.1.4 | BE层研发 | 16d | 2024-09-12 | 2024-10-03 | 30 | waiting |
| 34 | 1.5.1.1.5 | API集成 | 1d | 2024-08-29 | 2024-08-29 |  | waiting |
| 35 | 1.5.1.2 | **识别模型研发** | 30d | 2024-09-05 | 2024-10-16 |  |  |
| 36 | 1.5.1.2.1 | 分类模型研发 | 30d | 2024-09-05 | 2024-10-16 | 23 | waiting |
| 37 | 1.5.1.2.2 | 负向过滤模型研发 | 25d | 2024-09-05 | 2024-10-09 | 23 | waiting |
| 38 | 1.5.1.3 | **处置模型研发** | 23d | 2024-09-09 | 2024-10-09 |  |  |
| 39 | 1.5.1.3.1 | RAG知识库研发 | 23d | 2024-09-09 | 2024-10-09 | 24 | waiting |
| 40 | 1.5.1.3.2 | LLM研发 | 20d | 2024-09-09 | 2024-10-04 | 24 | waiting |
| 41 | 1.5.1.3.3 | 识别检索模型研发 | 15d | 2024-09-09 | 2024-09-27 | 24 | waiting |
| 42 | 1.5.1.4 | **数仓研发** | 38d | 2024-08-20 | 2024-10-10 |  |  |
| 43 | 1.5.1.4.1 | 数据爬取 | 25d | 2024-08-20 | 2024-09-23 | 25 | waiting |
| 44 | 1.5.1.4.2 | 数据清洗 | 30d | 2024-08-20 | 2024-09-30 | 25 | waiting |
| 45 | 1.5.1.4.3 | 数据入库 | 8d | 2024-10-01 | 2024-10-10 | 44, 43 | waiting |
| 46 | 1.5.1.5 | **平台研发** | 16d | 2024-10-04 | 2024-10-25 |  |  |
| 47 | 1.5.1.5.1 | CONSOLE平台研发 | 12d | 2024-10-10 | 2024-10-25 | 26, 39, 40, 41 | waiting |
| 48 | 1.5.1.5.2 | ADMIN平台研发 | 12d | 2024-10-04 | 2024-10-21 | 26, 31, 32, 33 | waiting |
| 49 | 1.5.1.5.3 | OP平台研发 | 7d | 2024-10-17 | 2024-10-25 | 26, 37, 36 | waiting |
| 50 | 1.5.2 | 集成研发 | 8d | 2024-10-28 | 2024-11-06 | 47, 48, 49, 45 | waiting |

| ID | WBS | Task | Duration | Start | Finish | Predecessors | Status |
| --- | --- | --- | --- | --- | --- | --- | --- |
| 51 | 1.6 | **产品测试** | 56d | 2024-09-09 | 2024-11-25 |  |  |
| 52 | 1.6.1 | **测试设计** | 16d | 2024-09-09 | 2024-09-30 |  | waiting |
| 53 | 1.6.1.1 | 测试用例设计 | 10d | 2024-09-09 | 2024-09-20 | 22, 23, 24, 25, 26 | waiting |
| 54 | 1.6.1.2 | 测试方案设计 | 6d | 2024-09-23 | 2024-09-30 | 53 | waiting |
| 55 | 1.6.2 | **模块测试** | 25d | 2024-10-04 | 2024-11-07 |  |  |
| 56 | 1.6.2.1 | API模块测试 | 9d | 2024-10-04 | 2024-10-16 | 54, 31, 32, 33 | waiting |
| 57 | 1.6.2.2 | 识别模型测试 | 12d | 2024-10-17 | 2024-11-01 | 54, 36, 37 | waiting |
| 58 | 1.6.2.3 | 处置模型测试 | 16d | 2024-10-10 | 2024-10-31 | 54, 39, 40, 41 | waiting |
| 59 | 1.6.2.4 | 数仓测试 | 8d | 2024-10-11 | 2024-10-22 | 54, 45 | waiting |
| 60 | 1.6.2.5 | 平台测试 | 9d | 2024-10-28 | 2024-11-07 | 54, 47, 48, 49 | waiting |
| 61 | 1.6.3 | 集成测试 | 12d | 2024-11-08 | 2024-11-25 | 50, 60, 59, 58, 57, 56 | waiting |
| 62 | 1.7 | 模型集成 | 1d | 2024-06-03 | 2024-06-03 |  |  |
| 63 | 1.8 | **部署与验收** | 26d | 2024-11-07 | 2024-12-12 |  |  |
| 64 | 1.8.1 | 部署方案设计 | 5d | 2024-11-07 | 2024-11-13 | 50 | waiting |
| 65 | 1.8.2 | 部署实施 | 12d | 2024-11-26 | 2024-12-11 | 61, 64 | waiting |
| 66 | 1.8.3 | 验收 | 1d | 2024-12-12 | 2024-12-12 | 65 | waiting |
